# Part2

Schedule from MS Project, 2012-01-03 to 2012-07-26, status date 2012-03-31, costs in $, A marks actual dates.

## Calendars

- Copy of Standard: Mon-Fri 08:00-12:00, 13:00-17:00; Sat-Sun off. Exceptions (off unless hours are given): 2012-01-02 to 2012-01-16 (Martin Luther King Day (third Monday in January), recurring), 2012-01-02 to 2012-05-28 (Memorial Day (last Monday in May), recurring), 2012-01-02 to 2012-07-04 (July 4th, recurring), 2012-01-02 to 2012-09-03 (Labor Day (first Monday in September), recurring), 2012-01-02 to 2012-11-22 (Thanksgiving Day (4th Thursday in November), recurring), 2012-01-02 to 2012-12-25 (December 25, recurring), 2012-01-02 to 2012-12-26 (December 26, recurring).

## Resources

| Resource | Group | Rate |
| --- | --- | --- |
| Marketing staff | MRK | 80 |
| R&D | R&D | 80 |
| Engineering | ENG | 100 |
| Purchasing | PURCH | 60 |
| Quality engineers | QUAL | 80 |
| Designers | DEIGN | 60 |
| Legal staff | LEGAL | 120 |
| Production | PROD | 60 |

## Schedule

| ID | WBS | Task | Duration | Start | Finish | Predecessors | Complete | Remaining | Baseline start | Baseline finish | Baseline duration | Total slack | Free slack | Resources | Work | Actual work | Cost | Baseline cost | Actual cost |
| --- | --- | --- | --- | --- | --- | --- | --- | --- | --- | --- | --- | --- | --- | --- | --- | --- | --- | --- | --- |
| 1 | 1 | **POM1Project** | 145d | 2012-01-03 A | 2012-07-26 |  | 29% | 103.49d | 2012-01-03 | 2012-07-19 | 140d | 0d |  |  | 24240h | 7600h | 1,796,000 | 1,692,000 | 571,200 |
| 2 | 1.1 | **R&D product development** | 54d | 2012-01-03 A | 2012-03-19 A |  | 100% |  | 2012-01-03 | 2012-03-13 | 50d |  |  |  | 2080h | 2080h | 166,400 | 150,400 | 166,400 |
| 3 | 1.1.1 | Need survey | 22d | 2012-01-03 A | 2012-02-02 A |  | 100% |  | 2012-01-03 | 2012-01-31 | 20d |  |  | Marketing staff [500%] | 880h | 880h | 70,400 | 64,000 | 70,400 |
| 4 | 1.1.2 | Set product specs | 18d | 2012-02-03 A | 2012-02-28 A | 3 | 100% |  | 2012-02-01 | 2012-02-21 | 15d |  |  | R&D [400%]; Marketing staff [200%] | 864h | 864h | 69,120 | 57,600 | 69,120 |
| 5 | 1.1.3 | Shelf life report | 10d | 2012-02-29 A | 2012-03-13 A | 4 | 100% |  | 2012-02-22 | 2012-03-06 | 10d |  |  | R&D [300%] | 240h | 240h | 19,200 | 19,200 | 19,200 |
| 6 | 1.1.4 | Nutrition report | 4d | 2012-03-14 A | 2012-03-19 A | 4 | 100% |  | 2012-03-07 | 2012-03-13 | 5d |  |  | R&D [300%] | 96h | 96h | 7,680 | 9,600 | 7,680 |
| 7 | 1.2 | Select fruit suppliers | 20d | 2012-03-20 | 2012-04-16 | 5, 6 |  |  | 2012-03-14 | 2012-04-10 | 20d | 1d |  | Purchasing | 160h |  | 9,600 | 9,600 |  |
| 8 | 1.3 | **Initial Production** | 90d | 2012-02-29 A | 2012-07-05 |  | 26% | 67d | 2012-02-22 | 2012-06-27 | 90d | 0d |  |  | 15120h | 5520h | 1,086,400 | 998,400 | 404,800 |
| 9 | 1.3.1 | Equipment rehab | 35d | 2012-02-29 A | 2012-04-17 | 4 | 66% | 12d | 2012-02-22 | 2012-04-03 | 30d | 0d |  | Engineering [1000%]; Production [2000%] | 8400h | 5520h | 616,000 | 528,000 | 404,800 |
| 10 | 1.3.2 | Production trials | 15d | 2012-04-18 | 2012-05-08 | 7, 9 |  |  | 2012-04-11 | 2012-05-01 | 15d | 0d |  | Production [1500%]; Purchasing; Engineering [1000%] | 3120h |  | 235,200 | 235,200 |  |
| 11 | 1.3.3 | Quality trials | 20d | 2012-05-09 | 2012-06-06 | 10 |  |  | 2012-05-02 | 2012-05-30 | 20d | 0d |  | Quality engineers [300%]; Production [500%] | 1280h |  | 86,400 | 86,400 |  |
| 12 | 1.3.4 | Quality metrics | 5d | 2012-06-07 | 2012-06-13 | 11 |  |  | 2012-05-31 | 2012-06-06 | 5d | 0d |  | Quality engineers [300%]; Production | 160h |  | 12,000 | 12,000 |  |
| 13 | 1.3.5 | Quality training | 15d | 2012-06-14 | 2012-07-05 | 12 |  |  | 2012-06-07 | 2012-06-27 | 15d | 0d |  | Quality engineers [300%]; Production [1500%] | 2160h |  | 136,800 | 136,800 |  |
| 14 | 1.4 | **Distribution** | 70d | 2012-03-20 | 2012-06-26 |  |  |  | 2012-03-14 | 2012-06-20 | 70d | 6d |  |  | 2680h |  | 207,200 | 207,200 |  |
| 15 | 1.4.1 | Market testing | 30d | 2012-03-20 | 2012-04-30 | 5, 6 |  |  | 2012-03-14 | 2012-04-24 | 30d | 6d | 0d | Marketing staff [500%] | 1200h |  | 96,000 | 96,000 |  |
| 16 | 1.4.2 | Package design | 15d | 2012-05-01 | 2012-05-21 | 15 |  |  | 2012-04-25 | 2012-05-15 | 15d | 31d |  | Designers [300%]; Marketing staff | 480h |  | 31,200 | 31,200 |  |
| 17 | 1.4.3 | Select distributors | 25d | 2012-05-22 | 2012-06-26 | 5, 6 |  |  | 2012-05-16 | 2012-06-20 | 25d | 6d |  | Marketing staff [500%] | 1000h |  | 80,000 | 80,000 |  |
| 18 | 1.5 | **Legal** | 20d | 2012-05-01 | 2012-05-29 |  |  |  | 2012-04-25 | 2012-05-22 | 20d | 6d |  |  | 480h |  | 57,600 | 57,600 |  |
| 19 | 1.5.1 | Complete FDA certification | 15d | 2012-05-01 | 2012-05-21 | 7, 15 |  |  | 2012-04-25 | 2012-05-15 | 15d | 6d |  | Legal staff [300%] | 360h |  | 43,200 | 43,200 |  |
| 20 | 1.5.2 | Register trademark | 5d | 2012-05-22 | 2012-05-29 | 7, 15 |  |  | 2012-05-16 | 2012-05-22 | 5d | 11d |  | Legal staff [300%] | 120h |  | 14,400 | 14,400 |  |
| 21 | 1.6 | Prepare product launch | 15d | 2012-07-06 | 2012-07-26 | 13, 16, 17, 19FS+25d, 20FS+15d |  |  | 2012-06-28 | 2012-07-19 | 15d | 0d |  | Quality engineers [300%]; Purchasing [200%]; Production [1500%]; Marketing staff [500%]; Engineering [500%]; R&D | 3720h |  | 268,800 | 268,800 |  |
